# Проект отделки квартиры - урок

Schedule from MS Project, 2021-09-27 to 2021-12-20, status date 2021-09-23, costs in ₽.

## Calendars

- Календарь 9-20 / 6 дней: Mon-Fri 09:00-13:00, 14:00-20:00; Sat 09:00-12:00, 13:00-16:00; Sun off. Exceptions (off unless hours are given): 2021-10-11 to 2021-10-12 (Празднование дня рождения компании).

## Resources

| Resource | Rate |
| --- | --- |
| Бригада стяжка (4 чел) | 700 |
| Кладочник | 350 |
| Бригада штукатуров (3 чел) | 1050 |
| Электрик | 650 |
| Разнорабочий | 350 |
| Project Manager |  |

## Schedule

| ID | WBS | Task | Type | Duration | Start | Finish | Predecessors | Total slack | Free slack | Constraint |
| --- | --- | --- | --- | --- | --- | --- | --- | --- | --- | --- |
| 1 | 1 | **ФАЗА 1 / ИНИЦИАЦИЯ** |  | 3d | 2021-09-27 | 2021-09-29 |  | 0d |  |  |
| 2 | 1.1 | Разработка бизнес-кейса проекта |  | 2d | 2021-09-27 | 2021-09-28 |  | 0d |  | start no earlier than 2021-09-27 |
| 3 | 1.2 | Разработка устава проекта |  | 2d | 2021-09-27 | 2021-09-28 | 2SS | 0d |  |  |
| 4 | 1.3 | Идентификация заинтересованных лиц |  | 1d | 2021-09-28 | 2021-09-29 | 3 | 0d |  |  |
| 5 | 1.4 | Решение о вхождении в проект | milestone | 0d | 2021-09-29 | 2021-09-29 | 2, 3, 4 | 0d |  |  |
| 6 | 2 | **ФАЗА 2 / ПЛАНИРОВАНИЕ** |  | 9d | 2021-09-29 | 2021-10-07 |  | 0d |  |  |
| 7 | 2.1 | **Содержание проекта** |  | 2d | 2021-09-29 | 2021-09-30 |  | 0d |  |  |
| 8 | 2.1.1 | Сбор требований |  | 2d | 2021-09-29 | 2021-09-30 | 5 | 0d |  |  |
| 9 | 2.1.2 | Определение содержания проекта |  | 2d | 2021-09-29 | 2021-09-30 | 8SS | 0d |  |  |
| 10 | 2.1.3 | Формирование ИСР |  | 2d | 2021-09-29 | 2021-09-30 | 8SS | 0d |  |  |
| 11 | 2.2 | **Риски проекта** |  | 5d | 2021-10-01 | 2021-10-06 |  | 0d |  |  |
| 12 | 2.2.1 | Идентификация рисков |  | 2d | 2021-10-01 | 2021-10-02 | 10, 8, 9 | 0d |  |  |
| 13 | 2.2.2 | Качественный и количественный анализ рисков |  | 2d | 2021-10-04 | 2021-10-05 | 12 | 0d |  |  |
| 14 | 2.2.3 | План реагирования на риски |  | 1d | 2021-10-05 | 2021-10-06 | 13 | 0d |  |  |
| 15 | 2.3 | **Раписание проекта** |  | 7d | 2021-10-01 | 2021-10-07 |  | 0d |  |  |
| 16 | 2.3.1 | Определение операций |  | 1d | 2021-10-01 | 2021-10-01 | 10 | 1d | 0d |  |
| 17 | 2.3.2 | Определение последовательностей операций |  | 1d | 2021-10-01 | 2021-10-02 | 16 | 1d | 0d |  |
| 18 | 2.3.3 | Оценка длительности |  | 1d | 2021-10-04 | 2021-10-04 | 17 | 1d | 0d |  |
| 19 | 2.3.4 | Оценка ресурсов |  | 1d | 2021-10-04 | 2021-10-05 | 18 | 1d | 0d |  |
| 20 | 2.3.5 | Разработка расписания проекта |  | 2d | 2021-10-06 | 2021-10-07 | 19, 14 | 0d |  |  |
| 21 | 2.4 | **Стоимость проекта** |  | 6d | 2021-10-01 | 2021-10-07 |  | 4d |  |  |
| 22 | 2.4.1 | Оценка стоимости работ |  | 1d | 2021-10-01 | 2021-10-02 | 16 | 4d | 3d |  |
| 23 | 2.4.2 | Планирование закупок проекта |  | 3d | 2021-10-05 | 2021-10-07 | 19 | 70.75d |  |  |
| 24 | 2.4.3 | Определение бюджета |  | 1d | 2021-10-06 | 2021-10-07 | 16, 19, 14, 22 | 1d |  |  |

| ID | WBS | Task | Type | Duration | Start | Finish | Predecessors | Total slack | Resources | Work | Cost | ед.изм | объем |
| --- | --- | --- | --- | --- | --- | --- | --- | --- | --- | --- | --- | --- | --- |
| 25 | 2.5 | **Качество проекта** |  | 2d | 2021-10-01 | 2021-10-02 |  | 5d |  |  |  |  |  |
| 26 | 2.5.1 | Согласование критериев качества |  | 2d | 2021-10-01 | 2021-10-02 | 10 | 5d |  |  |  |  |  |
| 27 | 2.6 | Старовое совещание проекта | milestone | 0d | 2021-10-07 | 2021-10-07 | 20, 24, 26 | 0d |  |  |  |  |  |
| 28 | 3 | **ФАЗА 3 / РЕАЛИЗАЦИЯ** |  | 63.75d | 2021-10-08 | 2021-12-13 |  | 0d |  | 304h | 206,800 |  |  |
| 29 | 3.1 | **Организационные решения** |  | 8d | 2021-10-08 | 2021-10-19 |  | 0d |  |  |  |  |  |
| 30 | 3.1.1 | Согласование стоимости работ |  | 4d | 2021-10-08 | 2021-10-14 | 27 | 0d |  |  |  |  |  |
| 31 | 3.1.2 | Подписание договора |  | 2d | 2021-10-14 | 2021-10-16 | 30 | 0d |  |  |  |  |  |
| 32 | 3.1.3 | Внесение аванса |  | 2d | 2021-10-16 | 2021-10-19 | 31 | 0d |  |  |  |  |  |
| 33 | 3.2 | **СМР** |  | 55.75d | 2021-10-19 | 2021-12-13 |  | 0d |  | 304h | 206,800 |  |  |
| 34 | 3.2.1 | **Подготовительные работы** |  | 4.75d | 2021-10-19 | 2021-10-22 |  | 0d |  | 32h | 13,600 |  |  |
| 35 | 3.2.1.1 | Мобилизация |  | 2d | 2021-10-19 | 2021-10-20 | 32 | 0.5d |  |  |  |  |  |
| 36 | 3.2.1.2 | Первичное снабжение объекта |  | 2d | 2021-10-19 | 2021-10-21 | 32 | 0d | Разнорабочий | 16h | 5,600 |  |  |
| 37 | 3.2.1.3 | Укрывка поверхностей |  | 1d | 2021-10-21 | 2021-10-22 | 36, 35 | 0d | Разнорабочий | 8h | 2,800 |  |  |
| 38 | 3.2.1.4 | Временное освещение |  | 1d | 2021-10-22 | 2021-10-22 | 37 | 0d | Электрик | 8h | 5,200 |  |  |
| 39 | 3.2.2 | **Полы** |  | 13d | 2021-11-01 | 2021-11-12 |  | 0d |  | 64h | 42,000 |  |  |
| 40 | 3.2.2.1 | **Стяжка пола** |  | 13d | 2021-11-01 | 2021-11-12 |  | 0d |  | 64h | 42,000 |  |  |
| 41 | 3.2.2.1.1 | Доставка станции |  | 1d | 2021-11-01 | 2021-11-01 | 49, 50 | 0d | Бригада стяжка (4 чел) | 8h | 5,600 |  |  |
| 42 | 3.2.2.1.2 | Обеспыливание |  | 1d | 2021-11-02 | 2021-11-02 | 41 | 0d | Разнорабочий | 8h | 2,800 | кв.м. | 65 |
| 43 | 3.2.2.1.3 | Демф.лента |  | 2d | 2021-11-02 | 2021-11-04 | 42 | 0d | Бригада стяжка (4 чел) | 16h | 11,200 | м.п. | 120 |
| 44 | 3.2.2.1.4 | Полусухая стяжка |  | 4d | 2021-11-04 | 2021-11-08 | 43 | 0d | Бригада стяжка (4 чел) | 32h | 22,400 | кв.м. | 65 |
| 45 | 3.2.2.1.5 | Уход за стяжкой |  | 5d | 2021-11-09 | 2021-11-12 | 44 | 0d |  |  |  |  |  |
| 46 | 3.2.3 | **Стены** |  | 32d | 2021-10-23 | 2021-11-24 |  | 0d |  | 152h | 114,800 |  |  |
| 47 | 3.2.3.1 | **Сооружение перегородок** |  | 8d | 2021-10-23 | 2021-11-01 |  | 0d |  | 64h | 22,400 |  |  |
| 48 | 3.2.3.1.1 | Разметка |  | 1d | 2021-10-23 | 2021-10-25 | 38 | 0d | Кладочник | 8h | 2,800 |  |  |
| 49 | 3.2.3.1.2 | Кладка |  | 7d | 2021-10-25 | 2021-11-01 | 48 | 0d | Кладочник [50%] | 28h | 9,800 | кв.м. | 60 |
| 50 | 3.2.3.1.3 | Формирование проемов |  | 7d | 2021-10-25 | 2021-11-01 | 49SS | 0d | Кладочник [50%] | 28h | 9,800 | шт |  |

| ID | WBS | Task | Duration | Start | Finish | Predecessors | Total slack | Resources | Work | Cost | ед.изм | объем |
| --- | --- | --- | --- | --- | --- | --- | --- | --- | --- | --- | --- | --- |
| 51 | 3.2.3.2 | **Оштукатуривание** | 11d | 2021-11-13 | 2021-11-24 |  | 0d |  | 88h | 92,400 |  |  |
| 52 | 3.2.3.2.1 | Установка маяков | 2d | 2021-11-13 | 2021-11-15 | 45 | 0d | Бригада штукатуров (3 чел) | 16h | 16,800 | кв.м. | 220 |
| 53 | 3.2.3.2.2 | Оштукатуривание | 7d | 2021-11-16 | 2021-11-22 | 52 | 0d | Бригада штукатуров (3 чел) | 56h | 58,800 | кв.м. | 220 |
| 54 | 3.2.3.2.3 | Глянцевание | 2d | 2021-11-23 | 2021-11-24 | 53 | 0d | Бригада штукатуров (3 чел) | 16h | 16,800 | кв.м. | 220 |
| 55 | 3.2.4 | **Электрика** | 7d | 2021-11-30 | 2021-12-06 |  | 0d |  | 56h | 36,400 |  |  |
| 56 | 3.2.4.1 | **Черновая разводка** | 7d | 2021-11-30 | 2021-12-06 |  | 0d |  | 56h | 36,400 |  |  |
| 57 | 3.2.4.1.1 | Разводка силовая | 3d | 2021-11-30 | 2021-12-02 | 54FS+5d | 0d | Электрик | 24h | 15,600 | кв.м. | 60 |
| 58 | 3.2.4.1.2 | Разводка слаботочная | 1d | 2021-12-02 | 2021-12-03 | 57 | 0d | Электрик | 8h | 5,200 | кв.м. | 60 |
| 59 | 3.2.4.1.3 | Щит | 1d | 2021-12-03 | 2021-12-03 | 57, 58 | 0d | Электрик | 8h | 5,200 | шт |  |
| 60 | 3.2.4.1.4 | Подрозетники | 2d | 2021-12-04 | 2021-12-06 | 59 | 0d | Электрик | 16h | 10,400 | шт | 40 |
| 61 | 3.2.5 | **Завершение СМР** | 7d | 2021-12-07 | 2021-12-13 |  | 0d |  |  |  |  |  |
| 62 | 3.2.5.1 | Финальная приемка работ у исполнителей | 2d | 2021-12-07 | 2021-12-08 | 45, 50, 54, 60 | 0d |  |  |  |  |  |
| 63 | 3.2.5.2 | Устранение замечаний | 2d | 2021-12-08 | 2021-12-10 | 62 | 0d |  |  |  |  |  |
| 64 | 3.2.5.3 | Временной резерв | 2d | 2021-12-10 | 2021-12-13 | 63 | 0d |  |  |  |  |  |
| 65 | 3.2.5.4 | Подтверждение готовности объекта у Заказчика | 1d | 2021-12-13 | 2021-12-13 | 64 | 0d |  |  |  |  |  |
| 66 | 4 | **ФАЗА 4 / ЗАКРЫТИЕ** | 7d | 2021-12-14 | 2021-12-20 |  | 0d |  |  |  |  |  |
| 67 | 4.1 | Передача объекта Заказчику | 1d | 2021-12-14 | 2021-12-14 | 65 | 0d |  |  |  |  |  |
| 68 | 4.2 | Финальные взаимные расчеты | 3d | 2021-12-14 | 2021-12-17 | 67 | 0d |  |  |  |  |  |
| 69 | 4.3 | Архивация данных | 1d | 2021-12-17 | 2021-12-17 | 68 | 0d |  |  |  |  |  |
| 70 | 4.4 | Завершение проекта, празднование | 2d | 2021-12-18 | 2021-12-20 | 69 | 0d |  |  |  |  |  |
